# GRUPO 2 - CONICET

Schedule from ProjectLibre, 2025-06-02 to 2025-11-13.

## Calendars

- Estandar: Mon-Fri 08:00-12:00, 13:00-17:00; Sat-Sun off.

## Resources

| Resource | Rate |
| --- | --- |
| No Asignado |  |
| Flores Lautaro | 15 |
| Oyhenart Franco | 15 |
| Romero Olmo Macarena | 15 |
| Pertile Valentina | 15 |
| Wilt Juan Ignacio | 15 |

## Schedule

| ID | WBS | Task | Duration | Start | Finish | Predecessors | Complete | Resources |
| --- | --- | --- | --- | --- | --- | --- | --- | --- |
| 1 | 1 | **Proyecto Sistema CONICET** | 119d | 2025-06-02 | 2025-11-13 |  | 100% |  |
| 2 | 1.1 | **Análisis y Relevamiento de Requisitos** | 2d | 2025-06-02 | 2025-06-03 |  | 100% |  |
| 3 | 1.1.1 | **Revisión de la entrevista y documentación técnica.** | 1d | 2025-06-02 | 2025-06-02 |  | 100% |  |
| 4 | 1.1.1.1 | Realización de la Minuta. | 1d | 2025-06-02 | 2025-06-02 |  | 100% | Wilt Juan Ignacio; Pertile Valentina; Romero Olmo Macarena; Oyhenart Franco; Flores Lautaro |
| 5 | 1.1.2 | **Identificación de procesos clave del ensayo mecánico.** | 1d | 2025-06-03 | 2025-06-03 |  | 100% |  |
| 6 | 1.1.2.1 | Objetivos Generales | 1d | 2025-06-03 | 2025-06-03 | 4 | 100% | Flores Lautaro; Oyhenart Franco; Romero Olmo Macarena; Pertile Valentina; Wilt Juan Ignacio |
| 7 | 1.1.2.2 | Objetivos Específicos. | 1d | 2025-06-03 | 2025-06-03 | 4 | 100% | Flores Lautaro; Oyhenart Franco; Romero Olmo Macarena; Pertile Valentina; Wilt Juan Ignacio |
| 8 | 1.1.2.3 | Definición de requisitos funcionales. | 1d | 2025-06-03 | 2025-06-03 | 4 | 100% | Flores Lautaro [50%]; Oyhenart Franco [50%]; Romero Olmo Macarena; Pertile Valentina; Wilt Juan Ignacio |
| 9 | 1.1.2.4 | Definición de requisitos no funcionales. | 1d | 2025-06-03 | 2025-06-03 | 4 | 100% | Flores Lautaro [50%]; Romero Olmo Macarena; Pertile Valentina; Oyhenart Franco; Wilt Juan Ignacio |
| 10 | 1.1.2.5 | Aprobación de requisitos por el cliente. | 1d | 2025-06-03 | 2025-06-03 | 4 | 100% | Flores Lautaro [50%]; Oyhenart Franco; Pertile Valentina; Wilt Juan Ignacio; Romero Olmo Macarena |
| 11 | 1.1.2.6 | Definición del Alcance | 1d | 2025-06-03 | 2025-06-03 | 4 | 100% | Flores Lautaro; Oyhenart Franco; Romero Olmo Macarena; Pertile Valentina; Wilt Juan Ignacio |
| 13 | 1.2 | **Diseño del Sistema** | 69d | 2025-06-04 | 2025-09-08 |  | 100% |  |
| 14 | 1.2.1 | Diseño de arquitectura general del sistema | 2d | 2025-06-04 | 2025-06-05 | 11 | 100% | Pertile Valentina; Wilt Juan Ignacio |
| 15 | 1.2.2 | Diseño de base de datos | 2d | 2025-06-06 | 2025-06-09 | 14 | 100% | Pertile Valentina; Wilt Juan Ignacio |
| 16 | 1.2.3 | **Diseño de la interfaz de usuario** | 2d | 2025-06-10 | 2025-06-11 |  | 100% |  |
| 17 | 1.2.3.1 | Diseño de la interfaz Menú | 2d | 2025-06-10 | 2025-06-11 | 15 | 100% | Pertile Valentina; Wilt Juan Ignacio |
| 18 | 1.2.3.2 | Diseño de la Interfaz de análisis | 2d | 2025-06-10 | 2025-06-11 | 15 | 100% | Pertile Valentina [150%]; Wilt Juan Ignacio |
| 19 | 1.2.3.3 | Diseño de la interfaz de Históricos | 2d | 2025-06-10 | 2025-06-11 | 15 | 100% | Pertile Valentina [150%]; Wilt Juan Ignacio [50%] |
| 20 | 1.2.4 | **Diseño de módulos funcionales** | 6d | 2025-06-06 | 2025-06-13 |  | 100% |  |
| 21 | 1.2.4.1 | Módulo de Automatización del procesamiento y análisis de datos | 2d | 2025-06-12 | 2025-06-13 | 18 | 100% | Wilt Juan Ignacio [50%]; Pertile Valentina [150%] |
| 22 | 1.2.4.2 | Visualización gráfica de resultados | 2d | 2025-06-12 | 2025-06-13 | 18 | 100% | Pertile Valentina; Wilt Juan Ignacio |
| 23 | 1.2.4.3 | Gestión de usuarios con acceso autenticado | 2d | 2025-06-12 | 2025-06-13 | 17 | 100% | Pertile Valentina; Wilt Juan Ignacio |
| 24 | 1.2.4.4 | Histórico de los análisis y datos relevantes | 2d | 2025-06-12 | 2025-06-13 | 19 | 100% | Wilt Juan Ignacio [150%]; Pertile Valentina [150%] |
| 25 | 1.2.4.5 | Desarrollo de interfaces intuitivas | 2d | 2025-06-06 | 2025-06-09 | 14, 11 | 100% | Wilt Juan Ignacio [50%]; Pertile Valentina [50%] |

| ID | WBS | Task | Duration | Start | Finish | Predecessors | Complete | Resources |
| --- | --- | --- | --- | --- | --- | --- | --- | --- |
| 26 | 1.2.5 | **Diseño de flujo de autenticación y permisos** | 2d | 2025-09-05 | 2025-09-08 |  | 100% |  |
| 27 | 1.2.5.1 | Desarrollo de sistema de autenticación | 2d | 2025-09-05 | 2025-09-08 | 14 | 100% | Pertile Valentina [150%]; Wilt Juan Ignacio |
| 28 | 1.2.5.2 | Desarrollo de alta de usuarios | 2d | 2025-09-05 | 2025-09-08 | 14 | 100% | Wilt Juan Ignacio; Pertile Valentina |
| 30 | 1.3 | **Desarrollo** | 66d | 2025-08-04 | 2025-11-03 |  | 100% |  |
| 31 | 1.3.1 | **Desarrollo del backend (lógica de cálculo, persistencia, API)** | 63d | 2025-08-04 | 2025-10-29 |  | 100% |  |
| 32 | 1.3.1.1 | Desarrollo de la lógica de cálculo | 12d | 2025-08-04 | 2025-08-19 | 17 | 100% | Romero Olmo Macarena [150%]; Oyhenart Franco [150%]; Flores Lautaro [150%] |
| 33 | 1.3.1.2 | Desarrollo de la persistencia en la base de datos de los análisis y datos relevantes | 12d | 2025-08-04 | 2025-08-19 | 24, 21 | 100% | Oyhenart Franco; Flores Lautaro; Romero Olmo Macarena |
| 34 | 1.3.1.3 | Desarrollo del análisis de documentos excel o csv. | 10d | 2025-08-19 | 2025-09-01 | 18, 21 | 100% | Romero Olmo Macarena; Flores Lautaro; Oyhenart Franco |
| 35 | 1.3.1.4 | Desarrollo del análisis y generación de las Gráficas de los datos | 11d | 2025-08-19 | 2025-09-02 | 22, 21, 19, 18 | 100% | Romero Olmo Macarena; Oyhenart Franco; Flores Lautaro |
| 36 | 1.3.1.5 | Desarrollo de la autenticación de usuarios y validación de los mismos | 12d | 2025-09-05 | 2025-09-22 | 17, 23 | 100% | Romero Olmo Macarena; Oyhenart Franco; Flores Lautaro |
| 37 | 1.3.1.6 | Persistencia de las cuentas de usuarios con su usuario y contraseña | 29d | 2025-09-19 | 2025-10-29 | 17, 23 | 100% | Romero Olmo Macarena; Oyhenart Franco; Flores Lautaro [150%] |
| 38 | 1.3.2 | **Desarrollo del frontend (interfaz gráfica, carga de archivos, visualización)** | 39d | 2025-09-05 | 2025-10-29 |  | 100% |  |
| 39 | 1.3.2.1 | Desarrollo de la interfaz del menú | 39d | 2025-09-05 | 2025-10-29 | 17 | 100% | Romero Olmo Macarena; Flores Lautaro; Oyhenart Franco |
| 40 | 1.3.3 | **Desarrollo de la interfaz de análisis** | 42d | 2025-09-05 | 2025-11-03 |  | 100% |  |
| 41 | 1.3.3.1 | Desarrollo de formulario para variables, constantes y archivo subido | 19.15d | 2025-09-05 | 2025-10-02 | 17 | 100% | Romero Olmo Macarena; Oyhenart Franco; Flores Lautaro |
| 42 | 1.3.3.2 | Desarrollo de la interfaz de históricos | 2d | 2025-09-29 | 2025-09-30 | 19 | 100% | Oyhenart Franco; Romero Olmo Macarena; Flores Lautaro |
| 43 | 1.3.3.3 | Desarrollo de la visualización de las gráficas generadas a partir de los datos. | 9d | 2025-10-07 | 2025-10-17 | 18 | 100% | Romero Olmo Macarena; Oyhenart Franco; Flores Lautaro |
| 44 | 1.3.3.4 | Desarrollo de filtros de busqueda del historico de análisis y datos relevantes | 12d | 2025-10-17 | 2025-11-03 | 19 | 100% | Romero Olmo Macarena; Oyhenart Franco; Flores Lautaro |
| 46 | 1.4 | **Pruebas** | 7d | 2025-11-03 | 2025-11-11 |  | 100% |  |
| 47 | 1.4.1 | **Pruebas unitarias** | 3d | 2025-11-03 | 2025-11-05 |  | 100% |  |
| 48 | 1.4.1.1 | Prueba de módulo de análisis | 3d | 2025-11-03 | 2025-11-05 | 34, 32 | 100% | Wilt Juan Ignacio; Pertile Valentina; Oyhenart Franco |
| 49 | 1.4.1.2 | Prueba de módulo de visualización gráfica | 3d | 2025-11-03 | 2025-11-05 | 35 | 100% | Wilt Juan Ignacio; Pertile Valentina; Oyhenart Franco |
| 50 | 1.4.1.3 | Prueba de módulo historio de análisis y valores | 3d | 2025-11-03 | 2025-11-05 | 33 | 100% | Oyhenart Franco; Pertile Valentina; Wilt Juan Ignacio |
| 51 | 1.4.2 | **Pruebas funcionales con escenarios reales** | 3d | 2025-11-06 | 2025-11-10 |  | 100% |  |
| 52 | 1.4.2.1 | Integración de los módulos anteriores | 3d | 2025-11-06 | 2025-11-10 | 48, 49, 50 | 100% | Wilt Juan Ignacio; Pertile Valentina; Oyhenart Franco |

| ID | WBS | Task | Duration | Start | Finish | Predecessors | Complete | Resources |
| --- | --- | --- | --- | --- | --- | --- | --- | --- |
| 53 | 1.4.3 | **Pruebas de rendimiento** | 1d | 2025-11-06 | 2025-11-06 |  | 100% |  |
| 54 | 1.4.3.1 | Prueba de velocidad de carga y análisis | 1d | 2025-11-06 | 2025-11-06 | 48 | 100% | Oyhenart Franco; Pertile Valentina; Wilt Juan Ignacio [50%]; Romero Olmo Macarena |
| 55 | 1.4.3.2 | Prueba de velocidad de visualización de las gráfica | 1d | 2025-11-06 | 2025-11-06 | 49 | 100% | Wilt Juan Ignacio; Pertile Valentina; Oyhenart Franco |
| 56 | 1.4.4 | Pruebas de recuperación de errores | 1d | 2025-11-11 | 2025-11-11 | 52 | 100% | Wilt Juan Ignacio [150%]; Pertile Valentina; Oyhenart Franco [50%] |
| 58 | 1.5 | **Documentación** | 2d | 2025-11-11 | 2025-11-12 |  | 100% |  |
| 59 | 1.5.1 | Manual de usuario | 1d | 2025-11-11 | 2025-11-11 | 52 | 100% | Wilt Juan Ignacio; Pertile Valentina; Romero Olmo Macarena; Oyhenart Franco; Flores Lautaro [150%] |
| 60 | 1.5.2 | Manual técnico para mantenimiento futuro | 1d | 2025-11-12 | 2025-11-12 | 59 | 100% | Pertile Valentina; Oyhenart Franco; Romero Olmo Macarena; Flores Lautaro; Wilt Juan Ignacio |
| 61 | 1.5.3 | Documentación de requerimientos | 1d | 2025-11-12 | 2025-11-12 | 59 | 100% | Oyhenart Franco; Flores Lautaro; Pertile Valentina; Romero Olmo Macarena; Wilt Juan Ignacio |
| 62 | 1.5.4 | **Bitácora de pruebas** | 1d | 2025-11-12 | 2025-11-12 |  | 100% |  |
| 63 | 1.5.4.1 | Registro de cada prueba unitaria | 1d | 2025-11-12 | 2025-11-12 | 48, 49, 50 | 100% | Oyhenart Franco; Flores Lautaro [50%]; Romero Olmo Macarena; Wilt Juan Ignacio; Pertile Valentina |
| 64 | 1.5.4.2 | Registro de cada prueba integral | 1d | 2025-11-12 | 2025-11-12 | 52 | 100% | Romero Olmo Macarena; Oyhenart Franco; Flores Lautaro; Wilt Juan Ignacio; Pertile Valentina |
| 66 | 1.6 | **Entrega e Implementación** | 2d | 2025-11-12 | 2025-11-13 |  | 100% |  |
| 67 | 1.6.1 | Presentación del sistema al cliente | 2d | 2025-11-12 | 2025-11-13 | 59 | 100% | Flores Lautaro; Oyhenart Franco; Romero Olmo Macarena; Pertile Valentina; Wilt Juan Ignacio |
| 68 | 1.6.2 | Instalación en entorno final o entrega del instalador | 1d | 2025-11-13 | 2025-11-13 | 59, 60 | 100% | Flores Lautaro; Oyhenart Franco; Romero Olmo Macarena; Pertile Valentina; Wilt Juan Ignacio |
| 69 | 1.6.3 | Capacitación a usuarios finales | 1d | 2025-11-12 | 2025-11-12 | 59 | 100% | Romero Olmo Macarena; Oyhenart Franco; Flores Lautaro; Pertile Valentina; Wilt Juan Ignacio |
| 70 | 1.6.4 | Revisión y ajustes finales | 1d | 2025-11-12 | 2025-11-12 | 59 | 100% | Wilt Juan Ignacio; Romero Olmo Macarena; Pertile Valentina; Oyhenart Franco; Flores Lautaro |
